# Gantt del Proyecto v1.0

Schedule from MS Project, 2014-04-10 to 2014-11-14.

## Calendars

- Calendario PF: Mon-Sun 09:00-13:00, 15:00-19:00.

## Resources

| Resource |
| --- |
| Joaquin O Ibar |
| Lucas Sagaria |
| Gonzalo García Córdoba |
| Iván Franco |
| Ignacio J. Abad |
| 00 |

## Schedule

| ID | WBS | Task | Duration | Start | Finish | Predecessors | Total slack | Free slack | Constraint | Resources | Work |
| --- | --- | --- | --- | --- | --- | --- | --- | --- | --- | --- | --- |
| 1 | 1 | **Sistema de información, alerta y prevención de accidentes en los centros de esquí (White Powder)** | 218.25d | 2014-04-10 | 2014-11-14 |  | 0d |  |  |  | 1594h |
| 2 | 1.1 | **Documentación de Gestión del Proyecto** | 21.25d | 2014-04-10 | 2014-05-01 |  | 27d |  | start no earlier than 2014-04-10 |  | 144h |
| 3 | 1.1.1 | **Acta de Proyecto** | 10.25d | 2014-04-10 | 2014-04-20 |  | 32d |  | finish no later than 2014-05-22 |  | 26h |
| 4 | 1.1.1.1 | Elaboración del documento | 12h | 2014-04-10 | 2014-04-15 |  | 32d | 0.75d |  | Lucas Sagaria | 16h |
| 5 | 1.1.1.2 | Revisión del documento | 4h | 2014-04-16 | 2014-04-17 | 4 | 32d | 0.75d |  | Gonzalo García Córdoba | 4h |
| 6 | 1.1.1.3 | Validación y correcciones | 6h | 2014-04-18 | 2014-04-20 | 5 | 32d |  |  | Ignacio J. Abad | 6h |
| 7 | 1.1.2 | **Documento de WBS** | 7.25d | 2014-04-10 | 2014-04-17 |  | 28d | 0.75d | finish no later than 2014-05-22 |  | 16h |
| 8 | 1.1.2.1 | Elaboración del documento | 8h | 2014-04-10 | 2014-04-13 |  | 28d | 0.75d |  | Gonzalo García Córdoba | 8h |
| 9 | 1.1.2.2 | Revisión del documento | 4h | 2014-04-14 | 2014-04-15 | 8 | 28d | 0.75d |  | Ignacio J. Abad | 4h |
| 10 | 1.1.2.3 | Validación y correcciones | 4h | 2014-04-16 | 2014-04-17 | 9 | 28d |  |  | Joaquin O Ibar | 4h |
| 11 | 1.1.3 | **Matriz de Roles y Responsabilidades** | 7.25d | 2014-04-15 | 2014-04-22 |  | 30d |  | finish no later than 2014-05-22 |  | 12h |
| 12 | 1.1.3.1 | Elaboración del documento | 6h | 2014-04-15 | 2014-04-19 |  | 30d | 0.75d |  | Joaquin O Ibar | 6h |
| 13 | 1.1.3.2 | Revisión del documento | 3h | 2014-04-20 | 2014-04-21 | 12 | 30d | 0d |  | Iván Franco | 3h |
| 14 | 1.1.3.3 | Validación y correcciones | 3h | 2014-04-21 | 2014-04-22 | 13 | 30d |  |  | Gonzalo García Córdoba | 3h |
| 15 | 1.1.4 | **Matriz de habilidades y competencias** | 8.25d | 2014-04-10 | 2014-04-18 |  | 34d |  | finish no later than 2014-05-22 |  | 12h |
| 16 | 1.1.4.1 | Elaboración del documento | 6h | 2014-04-10 | 2014-04-12 |  | 34d | 0.75d |  | Ignacio J. Abad | 6h |
| 17 | 1.1.4.2 | Revisión del documento | 3h | 2014-04-16 | 2014-04-17 | 16 | 34d | 0d |  | Lucas Sagaria | 3h |
| 18 | 1.1.4.3 | Validación y correcciones | 3h | 2014-04-17 | 2014-04-18 | 17 | 34d |  |  | Iván Franco | 3h |
| 19 | 1.1.5 | **Análisis de Riesgos** | 13.25d | 2014-04-10 | 2014-04-23 |  | 28d | 0.75d | finish no later than 2014-05-22 |  | 18h |
| 20 | 1.1.5.1 | Elaboración del documento | 10h | 2014-04-10 | 2014-04-14 |  | 28d | 0.75d |  | Joaquin O Ibar | 10h |
| 21 | 1.1.5.2 | Revisión del documento | 4h | 2014-04-20 | 2014-04-21 | 20 | 28d | 0.75d |  | Joaquin O Ibar | 4h |
| 22 | 1.1.5.3 | Validación y correcciones | 4h | 2014-04-22 | 2014-04-23 | 21 | 28d |  |  | Ignacio J. Abad | 4h |
| 23 | 1.1.6 | **Matriz de Comunicaciones** | 15.25d | 2014-04-10 | 2014-04-25 |  | 27d |  | finish no later than 2014-05-22 |  | 16h |
| 24 | 1.1.6.1 | Elaboración del documento | 8h | 2014-04-10 | 2014-04-13 |  | 27d | 0.75d |  | Iván Franco | 8h |
| 25 | 1.1.6.2 | Revisión del documento | 4h | 2014-04-22 | 2014-04-23 | 24 | 27d | 0.75d |  | Joaquin O Ibar | 4h |
| 26 | 1.1.6.3 | Validación y correcciones | 4h | 2014-04-24 | 2014-04-25 | 25 | 27d |  |  | Iván Franco | 4h |

| ID | WBS | Task | Duration | Start | Finish | Predecessors | Total slack | Free slack | Constraint | Resources | Work |
| --- | --- | --- | --- | --- | --- | --- | --- | --- | --- | --- | --- |
| 27 | 1.1.7 | **GANTT del proyecto** | 13.25d | 2014-04-18 | 2014-05-01 |  | 28d |  | finish no later than 2014-05-29 |  | 28h |
| 28 | 1.1.7.1 | Elaboración del documento | 16h | 2014-04-18 | 2014-04-25 | 7 | 28d | 0.75d |  | Lucas Sagaria | 16h |
| 29 | 1.1.7.2 | Revisión del documento | 4h | 2014-04-26 | 2014-04-27 | 28 | 28d | 0.75d |  | Ignacio J. Abad | 4h |
| 30 | 1.1.7.3 | Validación y correcciones | 8h | 2014-04-28 | 2014-05-01 | 29 | 28d |  |  | Iván Franco | 8h |
| 31 | 1.1.8 | **Análisis de factibilidad técnica y operativa** | 7.25d | 2014-04-24 | 2014-05-01 |  | 28d |  | finish no later than 2014-05-29 |  | 16h |
| 32 | 1.1.8.1 | Elaboración del documento | 8h | 2014-04-24 | 2014-04-27 | 19 | 28d | 0.75d |  | Gonzalo García Córdoba | 8h |
| 33 | 1.1.8.2 | Revisión del documento | 4h | 2014-04-28 | 2014-04-29 | 32 | 28d | 0.75d |  | Lucas Sagaria | 4h |
| 34 | 1.1.8.3 | Validación y correcciones | 4h | 2014-04-30 | 2014-05-01 | 33 | 28d |  |  | Lucas Sagaria | 4h |
| 35 | 1.2 | **Documentación de Análisis** | 39.25d | 2014-04-10 | 2014-05-19 |  | 41d | 0.75d | finish no later than 2014-07-03 |  | 206h |
| 36 | 1.2.1 | **Documento de requerimientos de negocio** | 13.25d | 2014-04-29 | 2014-05-12 |  | 52d |  |  |  | 18h |
| 37 | 1.2.1.1 | Elaboración del documento | 10h | 2014-04-29 | 2014-05-03 |  | 52d | 0.75d |  | Lucas Sagaria | 10h |
| 38 | 1.2.1.2 | Revisión del documento | 2h | 2014-05-04 | 2014-05-04 | 37 | 52d | 0.75d |  | Ignacio J. Abad | 2h |
| 39 | 1.2.1.3 | Validación y correcciones | 6h | 2014-05-10 | 2014-05-12 | 38 | 52d |  |  | Gonzalo García Córdoba | 6h |
| 40 | 1.2.2 | **Matriz de trazabilidad entre requerimientos y casos de uso** | 39.25d | 2014-04-10 | 2014-05-19 |  | 45d |  |  |  | 14h |
| 41 | 1.2.2.1 | Elaboración del documento | 8h | 2014-04-10 | 2014-04-13 |  | 45d | 0.75d |  | Joaquin O Ibar | 8h |
| 42 | 1.2.2.2 | Revisión del documento | 2h | 2014-04-21 | 2014-04-21 | 41 | 45d | 0.75d |  | Iván Franco | 2h |
| 43 | 1.2.2.3 | Validación y correcciones | 4h | 2014-05-18 | 2014-05-19 | 42 | 45d |  |  | Lucas Sagaria | 4h |
| 44 | 1.2.3 | **Documentos de casos de uso** | 26.25d | 2014-04-10 | 2014-05-06 |  | 41d | 0.75d |  |  | 158h |
| 45 | 1.2.3.1 | **Diagramas de casos de uso** | 26.25d | 2014-04-10 | 2014-05-06 |  | 41d |  |  |  | 56h |
| 46 | 1.2.3.1.1 | Elaboración del documento | 32h | 2014-04-10 | 2014-04-28 |  | 41d | 0.75d |  | Lucas Sagaria; Gonzalo García Córdoba | 32h |
| 47 | 1.2.3.1.2 | Revisión del documento | 8h | 2014-04-29 | 2014-05-02 | 46 | 41d | 0.75d |  | Gonzalo García Córdoba | 8h |
| 48 | 1.2.3.1.3 | Validación y correcciones | 8h | 2014-05-03 | 2014-05-06 | 47 | 41d |  |  | Iván Franco; Gonzalo García Córdoba | 16h |
| 49 | 1.2.3.2 | **Especificación de casos de uso** | 21.25d | 2014-04-10 | 2014-05-01 |  | 45d |  |  |  | 102h |
| 50 | 1.2.3.2.1 | Elaboración del documento | 22h | 2014-04-10 | 2014-04-20 |  | 45d | 0.75d |  | Lucas Sagaria; Ignacio J. Abad; Iván Franco | 66h |
| 51 | 1.2.3.2.2 | Revisión del documento | 8h | 2014-04-21 | 2014-04-24 | 50 | 46d | 0.75d |  | Gonzalo García Córdoba | 8h |
| 52 | 1.2.3.2.3 | Validación y correcciones | 14h | 2014-04-25 | 2014-05-01 | 51 | 46d |  |  | Ignacio J. Abad; Iván Franco | 28h |

| ID | WBS | Task | Duration | Start | Finish | Predecessors | Total slack | Free slack | Constraint | Resources | Work |
| --- | --- | --- | --- | --- | --- | --- | --- | --- | --- | --- | --- |
| 53 | 1.2.4 | **Diagramas de actividades** | 15.25d | 2014-05-04 | 2014-05-19 |  | 45d |  |  |  | 16h |
| 54 | 1.2.4.1 | Elaboración del documento | 16h | 2014-05-04 | 2014-05-17 | 50 | 45d | 0d |  | Lucas Sagaria | 16h |
| 55 | 1.2.4.2 | Revisión del documento | 8h | 2014-05-17 | 2014-05-18 | 54 | 45.62d | 0d |  |  |  |
| 56 | 1.2.4.3 | Validación y correcciones | 8h | 2014-05-18 | 2014-05-19 | 55 | 45.62d |  |  |  |  |
| 57 | 1.3 | **Documentación de Diseño** | 16.25d | 2014-05-07 | 2014-05-23 | 44 | 41d | 0.75d |  |  | 86h |
| 58 | 1.3.1 | **Diagrama Entidad Relación** | 14.25d | 2014-05-07 | 2014-05-21 |  | 43d |  |  |  | 12h |
| 59 | 1.3.1.1 | Elaboración del documento | 6h | 2014-05-07 | 2014-05-09 |  | 43d | 0.75d | finish no later than 2014-07-03 | Iván Franco | 6h |
| 60 | 1.3.1.2 | Revisión del documento | 2h | 2014-05-10 | 2014-05-10 | 59 | 43d | 0.75d | finish no later than 2014-07-03 | Joaquin O Ibar | 2h |
| 61 | 1.3.1.3 | Validación y corrección | 4h | 2014-05-20 | 2014-05-21 | 60 | 43d |  | finish no later than 2014-07-03 | Lucas Sagaria | 4h |
| 62 | 1.3.2 | **Diagrama de secuencia** | 10.25d | 2014-05-07 | 2014-05-17 |  | 47d |  | finish no later than 2014-07-03 |  | 12h |
| 63 | 1.3.2.1 | Elaboración del documento | 6h | 2014-05-07 | 2014-05-09 |  | 47d | 0.75d | finish no later than 2014-07-03 | Gonzalo García Córdoba | 6h |
| 64 | 1.3.2.2 | Revisión del documento | 2h | 2014-05-14 | 2014-05-14 | 63 | 47d | 0.75d | finish no later than 2014-07-03 | Ignacio J. Abad | 2h |
| 65 | 1.3.2.3 | Validación y corrección | 4h | 2014-05-16 | 2014-05-17 | 64 | 47d |  | finish no later than 2014-07-03 | Ignacio J. Abad | 4h |
| 66 | 1.3.3 | **Estructura de pantallas - Mockup (UI)** | 13.25d | 2014-05-07 | 2014-05-20 |  | 44d |  | finish no later than 2014-07-03 |  | 24h |
| 67 | 1.3.3.1 | Elaboración del documento | 12h | 2014-05-07 | 2014-05-12 |  | 44d | 0.75d | finish no later than 2014-07-03 | Lucas Sagaria | 12h |
| 68 | 1.3.3.2 | Revisión del documento | 4h | 2014-05-13 | 2014-05-14 | 67 | 44d | 0.75d | finish no later than 2014-07-03 | Joaquin O Ibar | 4h |
| 69 | 1.3.3.3 | Validación y corrección | 8h | 2014-05-17 | 2014-05-20 | 68 | 44d |  | finish no later than 2014-07-03 | Joaquin O Ibar | 8h |
| 70 | 1.3.4 | **Diagrama de interacción (UX)** | 16.25d | 2014-05-07 | 2014-05-23 |  | 41d |  | finish no later than 2014-07-03 |  | 12h |
| 71 | 1.3.4.1 | Elaboración del documento | 6h | 2014-05-07 | 2014-05-09 |  | 41d | 0.75d | finish no later than 2014-07-03 | Ignacio J. Abad | 6h |
| 72 | 1.3.4.2 | Revisión del documento | 2h | 2014-05-15 | 2014-05-15 | 71 | 41d | 0.75d | finish no later than 2014-07-03 | Ignacio J. Abad | 2h |
| 73 | 1.3.4.3 | Validación y corrección | 4h | 2014-05-22 | 2014-05-23 | 72 | 41d |  | finish no later than 2014-07-03 | Lucas Sagaria | 4h |
| 74 | 1.3.5 | **Diagrama de despliegue** | 7.25d | 2014-05-10 | 2014-05-17 |  | 47d |  | finish no later than 2014-07-03 |  | 14h |
| 75 | 1.3.5.1 | Elaboración del documento | 8h | 2014-05-10 | 2014-05-13 |  | 47d | 0.75d | finish no later than 2014-07-03 | Iván Franco | 8h |
| 76 | 1.3.5.2 | Revisión del documento | 2h | 2014-05-15 | 2014-05-15 | 75 | 47d | 0.75d | finish no later than 2014-07-03 | Joaquin O Ibar | 2h |
| 77 | 1.3.5.3 | Validación y corrección | 4h | 2014-05-16 | 2014-05-17 | 76 | 47d |  | finish no later than 2014-07-03 | Iván Franco | 4h |

| ID | WBS | Task | Duration | Start | Finish | Predecessors | Total slack | Free slack | Constraint | Resources | Work |
| --- | --- | --- | --- | --- | --- | --- | --- | --- | --- | --- | --- |
| 78 | 1.3.6 | **Diagrama de clases** | 8.25d | 2014-05-10 | 2014-05-18 |  | 46d |  | finish no later than 2014-07-03 |  | 12h |
| 79 | 1.3.6.1 | Elaboración del documento | 8h | 2014-05-10 | 2014-05-13 | 59 | 46d | 0.75d | finish no later than 2014-07-03 | Ignacio J. Abad | 8h |
| 80 | 1.3.6.2 | Revisión del documento | 2h | 2014-05-16 | 2014-05-16 | 79 | 46d | 0.75d | finish no later than 2014-07-03 | Joaquin O Ibar | 2h |
| 81 | 1.3.6.3 | Validación y corrección | 2h | 2014-05-18 | 2014-05-18 | 80 | 46d |  | finish no later than 2014-07-03 | Iván Franco | 2h |
| 82 | 1.4 | **Construcción del sistema** | 161.25d | 2014-05-24 | 2014-11-01 | 57 | 0d |  |  |  | 1066h |
| 83 | 1.4.1 | **Construcción del primer prototipo** | 25.12d | 2014-05-24 | 2014-06-18 |  | 68.12d | 0d |  |  | 421h |
| 84 | 1.4.1.1 | **Módulo Registro de usuarios** | 5.12d | 2014-05-24 | 2014-05-29 |  | 81d | 0d |  |  | 44h |
| 85 | 1.4.1.1.1 | Registro de usuarios | 6h | 2014-05-24 | 2014-05-26 |  | 83.12d |  |  | Iván Franco; Ignacio J. Abad; Joaquin O Ibar; Lucas Sagaria | 24h |
| 86 | 1.4.1.1.2 | Reseteo de contraseña | 5h | 2014-05-27 | 2014-05-29 |  | 81d |  |  | Ignacio J. Abad; Iván Franco; Joaquin O Ibar; Lucas Sagaria | 20h |
| 87 | 1.4.1.2 | **Modulo Login** | 7.12d | 2014-05-29 | 2014-06-05 |  | 81d |  |  |  | 60h |
| 88 | 1.4.1.2.1 | Autenticación de usuarios | 7h | 2014-05-29 | 2014-06-01 | 84 | 81d | 0.75d |  | Iván Franco; Lucas Sagaria; Ignacio J. Abad; Joaquin O Ibar | 28h |
| 89 | 1.4.1.2.2 | Validación de usuarios | 8h | 2014-06-02 | 2014-06-05 | 88 | 81d |  |  | Iván Franco; Lucas Sagaria; Ignacio J. Abad; Joaquin O Ibar | 32h |
| 90 | 1.4.1.3 | **Modulo Información básica** | 15.25d | 2014-05-24 | 2014-06-08 |  | 75d | 0.75d |  |  | 128h |
| 91 | 1.4.1.3.1 | Ubicación y detalles de las facilidades del centro de esquí | 8h | 2014-05-24 | 2014-05-27 |  | 75d | 0.75d |  | Ignacio J. Abad; Iván Franco; Lucas Sagaria; Joaquin O Ibar | 32h |
| 92 | 1.4.1.3.2 | Normas de seguridad | 8h | 2014-05-28 | 2014-05-31 | 91 | 75d | 0.75d |  | Ignacio J. Abad; Iván Franco; Lucas Sagaria; Joaquin O Ibar | 32h |
| 93 | 1.4.1.3.3 | Señalización en las pistas | 8h | 2014-06-01 | 2014-06-04 | 92 | 75d | 0.75d |  | Ignacio J. Abad; Iván Franco; Lucas Sagaria; Joaquin O Ibar | 32h |
| 94 | 1.4.1.3.4 | Información del clima | 8h | 2014-06-05 | 2014-06-08 | 93 | 75d |  |  | Ignacio J. Abad; Iván Franco; Lucas Sagaria; Joaquin O Ibar | 32h |
| 95 | 1.4.1.4 | **Módulo Mi perfil** | 2.25d | 2014-06-09 | 2014-06-11 |  | 75d |  |  |  | 24h |
| 96 | 1.4.1.4.1 | Ubicación actual | 6h | 2014-06-09 | 2014-06-11 | 90 | 75d |  |  | Ignacio J. Abad; Iván Franco; Joaquin O Ibar; Lucas Sagaria | 24h |
| 97 | 1.4.1.5 | **Modulo Administración** | 7.25d | 2014-05-24 | 2014-05-31 |  | 68.12d | 0.75d |  |  | 64h |
| 98 | 1.4.1.5.1 | Edición de información básica del centro de esquí | 4h | 2014-05-24 | 2014-05-25 |  | 68.12d | 0.75d |  | Ignacio J. Abad; Iván Franco; Joaquin O Ibar; Lucas Sagaria | 16h |
| 99 | 1.4.1.5.2 | ABM de pistas | 5h | 2014-05-26 | 2014-05-28 | 98 | 68.12d | 0d |  | Ignacio J. Abad; Iván Franco; Joaquin O Ibar; Lucas Sagaria | 20h |
| 100 | 1.4.1.5.3 | ABM de administradores | 4h | 2014-05-28 | 2014-05-30 | 99 | 68.12d | 0d |  | Ignacio J. Abad; Iván Franco; Joaquin O Ibar; Lucas Sagaria | 16h |
| 101 | 1.4.1.5.4 | ABM de rescatistas | 3h | 2014-05-30 | 2014-05-31 | 100 | 68.88d |  |  | Ignacio J. Abad; Iván Franco; Joaquin O Ibar; Lucas Sagaria | 12h |

| ID | WBS | Task | Duration | Start | Finish | Predecessors | Total slack | Free slack | Constraint | Resources | Work |
| --- | --- | --- | --- | --- | --- | --- | --- | --- | --- | --- | --- |
| 102 | 1.4.1.6 | **Módulo Reconocimiento de pista** | 3.25d | 2014-06-01 | 2014-06-04 |  | 68.12d |  |  |  | 32h |
| 103 | 1.4.1.6.1 | Grabación de pista | 4h | 2014-06-01 | 2014-06-02 | 97 | 68.12d | 0.75d |  | Ignacio J. Abad; Iván Franco; Joaquin O Ibar; Lucas Sagaria | 16h |
| 104 | 1.4.1.6.2 | Confirmación de pista | 4h | 2014-06-03 | 2014-06-04 | 103 | 68.12d | 0.75d |  | Ignacio J. Abad; Iván Franco; Joaquin O Ibar; Lucas Sagaria | 16h |
| 105 | 1.4.1.7 | Ejecución de casos de pruebas | 14h | 2014-06-05 | 2014-06-11 | 104, 161 | 68.12d | 0.75d |  | Joaquin O Ibar; Lucas Sagaria | 28h |
| 106 | 1.4.1.8 | **Informe de ejecución de pruebas** | 6.12d | 2014-06-12 | 2014-06-18 |  | 68.12d |  |  |  | 41h |
| 107 | 1.4.1.8.1 | Elaboración del documento | 4h | 2014-06-12 | 2014-06-13 | 105 | 68.12d | 0.75d |  | Iván Franco | 4h |
| 108 | 1.4.1.8.2 | Revisión de incidentes de testing | 2h | 2014-06-14 | 2014-06-14 | 107 | 68.12d | 0.75d |  | Ignacio J. Abad | 2h |
| 109 | 1.4.1.8.3 | Corrección de incidentes de testing | 7h | 2014-06-15 | 2014-06-18 | 108 | 68.12d |  |  | Gonzalo García Córdoba; Ignacio J. Abad; Iván Franco; Joaquin O Ibar; Lucas Sagaria | 35h |
| 110 | 1.4.2 | **Construcción del segundo prototipo** | 31d | 2014-06-18 | 2014-07-19 | 83 | 68.12d | 0d |  |  | 209h |
| 111 | 1.4.2.1 | **Módulo Mi Perfil** | 2d | 2014-06-18 | 2014-06-20 |  | 68.12d | 0d |  |  | 16h |
| 112 | 1.4.2.1.1 | Reseteo/Cambio de contraseña | 4h | 2014-06-18 | 2014-06-20 |  | 68.12d |  |  | Ignacio J. Abad; Joaquin O Ibar; Lucas Sagaria; Gonzalo García Córdoba | 16h |
| 113 | 1.4.2.2 | **Módulo Administración** | 15.12d | 2014-06-20 | 2014-07-05 |  | 68.88d |  |  |  | 124h |
| 114 | 1.4.2.2.1 | ABM de zonas de alertas | 4h | 2014-06-20 | 2014-06-22 | 111 | 68.12d | 0d |  | Ignacio J. Abad; Joaquin O Ibar; Lucas Sagaria; Gonzalo García Córdoba | 16h |
| 115 | 1.4.2.2.2 | **Monitoreo de esquiadores en el centro de esquí** | 13.12d | 2014-06-22 | 2014-07-05 |  | 68.88d |  |  |  | 108h |
| 116 | 1.4.2.2.2.1 | Cantidad de esquiadores | 9h | 2014-06-22 | 2014-06-26 | 114 | 68.88d | 0.75d |  | Ignacio J. Abad; Joaquin O Ibar; Lucas Sagaria; Gonzalo García Córdoba | 36h |
| 117 | 1.4.2.2.2.2 | Ubicación de esquiadores | 9h | 2014-06-27 | 2014-07-01 | 116 | 68.12d | 0d |  | Ignacio J. Abad; Joaquin O Ibar; Lucas Sagaria; Gonzalo García Córdoba | 36h |
| 118 | 1.4.2.2.2.3 | Ubicación de rescatistas | 9h | 2014-07-01 | 2014-07-05 | 117 | 68.88d | 0.75d |  | Ignacio J. Abad; Joaquin O Ibar; Lucas Sagaria; Gonzalo García Córdoba | 36h |
| 119 | 1.4.2.3 | Ejecución de casos de pruebas | 14h | 2014-07-06 | 2014-07-12 | 118, 161 | 68.12d | 0.75d |  | Joaquin O Ibar; Lucas Sagaria | 28h |
| 120 | 1.4.2.4 | **Informe de ejecución de pruebas** | 6.12d | 2014-07-13 | 2014-07-19 |  | 68.12d |  |  |  | 41h |
| 121 | 1.4.2.4.1 | Elaboración del documento | 4h | 2014-07-13 | 2014-07-14 | 119 | 68.12d | 0.75d |  | Iván Franco | 4h |
| 122 | 1.4.2.4.2 | Revisión de incidentes de testing | 2h | 2014-07-15 | 2014-07-15 | 121 | 68.12d | 0.75d |  | Iván Franco | 2h |
| 123 | 1.4.2.4.3 | Corrección de incidentes de testing | 7h | 2014-07-16 | 2014-07-19 | 122 | 68.12d |  |  | Gonzalo García Córdoba; Ignacio J. Abad; Iván Franco; Joaquin O Ibar; Lucas Sagaria | 35h |
| 124 | 1.4.3 | **Construcción del tercer prototipo** | 86.75d | 2014-07-19 | 2014-10-13 | 110 | 0.12d |  |  |  | 202h |
| 125 | 1.4.3.1 | **Módulo Mi Perfil** | 86.75d | 2014-07-19 | 2014-10-13 |  | 0.12d |  |  |  | 48h |
| 126 | 1.4.3.1.1 | **Estadísticas** | 4d | 2014-07-19 | 2014-07-23 |  | 80.12d |  |  |  | 32h |
| 127 | 1.4.3.1.1.1 | Velocidad máxima alcanzada | 2h | 2014-07-19 | 2014-07-20 |  | 80.12d | 0d |  | Gonzalo García Córdoba; Ignacio J. Abad; Iván Franco; Lucas Sagaria | 8h |
| 128 | 1.4.3.1.1.2 | Velocidad promedio | 2h | 2014-07-20 | 2014-07-21 | 127 | 80.12d | 0d |  | Gonzalo García Córdoba; Ignacio J. Abad; Iván Franco; Lucas Sagaria | 8h |
| 129 | 1.4.3.1.1.3 | Altura máxima alcanzada | 2h | 2014-07-21 | 2014-07-22 | 128 | 80.12d | 0d |  | Gonzalo García Córdoba; Ignacio J. Abad; Iván Franco; Lucas Sagaria | 8h |
| 130 | 1.4.3.1.1.4 | Distancia recorrida | 2h | 2014-07-22 | 2014-07-23 | 129 | 80.12d |  |  | Gonzalo García Córdoba; Ignacio J. Abad; Iván Franco; Lucas Sagaria | 8h |
| 131 | 1.4.3.1.2 | Puesta a cero de estadísticas | 4h | 2014-10-12 | 2014-10-13 | 130 | 0d |  | finish no earlier than 2014-10-13 | Gonzalo García Córdoba; Ignacio J. Abad; Iván Franco; Lucas Sagaria | 16h |

| ID | WBS | Task | Duration | Start | Finish | Predecessors | Total slack | Free slack | Resources | Work |
| --- | --- | --- | --- | --- | --- | --- | --- | --- | --- | --- |
| 132 | 1.4.3.2 | **Módulo Alertas** | 4d | 2014-07-19 | 2014-07-23 |  | 68.88d |  |  | 80h |
| 133 | 1.4.3.2.1 | ABM de alertas | 4h | 2014-07-19 | 2014-07-21 |  | 82.12d | 0d | Gonzalo García Córdoba; Ignacio J. Abad; Iván Franco; Lucas Sagaria | 16h |
| 134 | 1.4.3.2.2 | **Envío de alertas monocanal** | 2d | 2014-07-21 | 2014-07-23 |  | 82.12d |  |  | 16h |
| 135 | 1.4.3.2.2.1 | A esquiadores | 2h | 2014-07-21 | 2014-07-22 | 133 | 82.12d | 0d | Gonzalo García Córdoba; Ignacio J. Abad; Iván Franco; Lucas Sagaria | 8h |
| 136 | 1.4.3.2.2.2 | A rescatistas | 2h | 2014-07-22 | 2014-07-23 | 135 | 82.12d |  | Gonzalo García Córdoba; Ignacio J. Abad; Iván Franco; Lucas Sagaria | 8h |
| 137 | 1.4.3.2.3 | Recepción de alertas | 4h | 2014-07-19 | 2014-07-21 |  | 84.12d |  | Gonzalo García Córdoba; Ignacio J. Abad; Iván Franco; Lucas Sagaria | 16h |
| 138 | 1.4.3.2.4 | **Envío de alertas multicanal** | 4d | 2014-07-19 | 2014-07-23 |  | 68.12d |  |  | 32h |
| 139 | 1.4.3.2.4.1 | A un grupo determinado | 6h | 2014-07-19 | 2014-07-22 |  | 68.12d | 0d | Gonzalo García Córdoba; Ignacio J. Abad; Iván Franco; Lucas Sagaria | 24h |
| 140 | 1.4.3.2.4.2 | A todos | 2h | 2014-07-22 | 2014-07-23 | 139 | 68.12d | 0d | Gonzalo García Córdoba; Ignacio J. Abad; Iván Franco; Lucas Sagaria | 8h |
| 141 | 1.4.3.3 | Ejecución de casos de pruebas | 14h | 2014-07-23 | 2014-07-30 | 140, 161 | 68.12d | 0d | Joaquin O Ibar; Lucas Sagaria | 28h |
| 142 | 1.4.3.4 | **Informe de ejecución de pruebas** | 7d | 2014-07-30 | 2014-08-06 |  | 68.12d |  |  | 46h |
| 143 | 1.4.3.4.1 | Elaboración del documento | 4h | 2014-07-30 | 2014-08-01 | 141 | 68.12d | 0d | Iván Franco | 4h |
| 144 | 1.4.3.4.2 | Revisión de incidentes de testing | 2h | 2014-08-01 | 2014-08-02 | 143 | 68.12d | 0d | Iván Franco | 2h |
| 145 | 1.4.3.4.3 | Corrección de incidentes de testing | 8h | 2014-08-02 | 2014-08-06 | 144 | 68.12d |  | Gonzalo García Córdoba; Ignacio J. Abad; Iván Franco; Joaquin O Ibar; Lucas Sagaria | 40h |
| 146 | 1.4.4 | **Construcción del cuarto prototipo** | 18.25d | 2014-10-14 | 2014-11-01 | 124 | 0d |  |  | 234h |
| 147 | 1.4.4.1 | **Módulo Alertas** | 5.25d | 2014-10-14 | 2014-10-19 |  | 13d |  |  | 48h |
| 148 | 1.4.4.1.1 | Incorporación de audio en las alertas | 12h | 2014-10-14 | 2014-10-19 |  | 13d |  | Gonzalo García Córdoba; Ignacio J. Abad; Iván Franco; Joaquin O Ibar | 48h |
| 149 | 1.4.4.2 | **Módulo Mi Perfil** | 8.25d | 2014-10-14 | 2014-10-22 |  | 10d |  |  | 72h |
| 150 | 1.4.4.2.1 | Conectar con periférico | 14h | 2014-10-14 | 2014-10-20 |  | 10d | 0.75d | Gonzalo García Córdoba; Ignacio J. Abad; Iván Franco; Joaquin O Ibar | 56h |
| 151 | 1.4.4.2.2 | Botón de emergencia | 4h | 2014-10-21 | 2014-10-22 | 150 | 10d |  | Gonzalo García Córdoba; Ignacio J. Abad; Iván Franco; Joaquin O Ibar | 16h |
| 152 | 1.4.4.3 | **Compartir en redes sociales** | 4.25d | 2014-10-14 | 2014-10-18 |  | 0d |  |  | 40h |
| 153 | 1.4.4.3.1 | Estadísticas | 6h | 2014-10-14 | 2014-10-16 |  | 0d |  | Gonzalo García Córdoba; Ignacio J. Abad; Iván Franco; Joaquin O Ibar | 24h |
| 154 | 1.4.4.3.2 | Ubicación actual | 4h | 2014-10-17 | 2014-10-18 | 153 | 0d |  | Gonzalo García Córdoba; Ignacio J. Abad; Iván Franco; Joaquin O Ibar | 16h |
| 155 | 1.4.4.4 | Ejecución de casos de pruebas | 14h | 2014-10-19 | 2014-10-25 | 154, 161 | 0d |  | Joaquin O Ibar; Lucas Sagaria | 28h |

| ID | WBS | Task | Duration | Start | Finish | Predecessors | Total slack | Free slack | Constraint | Resources | Work |
| --- | --- | --- | --- | --- | --- | --- | --- | --- | --- | --- | --- |
| 156 | 1.4.4.5 | **Informe de ejecución de pruebas** | 6.25d | 2014-10-26 | 2014-11-01 |  | 0d |  |  |  | 46h |
| 157 | 1.4.4.5.1 | Elaboración del documento | 4h | 2014-10-26 | 2014-10-27 | 155 | 0d |  |  | Iván Franco | 4h |
| 158 | 1.4.4.5.2 | Revisión de incidentes de testing | 2h | 2014-10-28 | 2014-10-28 | 157 | 0d |  |  | Iván Franco | 2h |
| 159 | 1.4.4.5.3 | Corrección de incidentes de testing | 8h | 2014-10-29 | 2014-11-01 | 158 | 0d |  |  | Gonzalo García Córdoba; Ignacio J. Abad; Iván Franco; Joaquin O Ibar; Lucas Sagaria | 40h |
| 160 | 1.5 | **Documentación de testing** | 4.25d | 2014-05-20 | 2014-05-24 |  | 79.12d |  |  |  | 10h |
| 161 | 1.5.1 | **Documeto de Casos de Prueba** | 4.25d | 2014-05-20 | 2014-05-24 |  | 79.12d | 11.75d |  |  | 10h |
| 162 | 1.5.1.1 | Elaboración del documento | 6h | 2014-05-20 | 2014-05-22 | 35 | 79.12d | 0.75d |  | Gonzalo García Córdoba | 6h |
| 163 | 1.5.1.2 | Revisión del documento | 2h | 2014-05-23 | 2014-05-23 | 162 | 79.12d | 0.75d |  | Gonzalo García Córdoba | 2h |
| 164 | 1.5.1.3 | Validación y correcciones | 2h | 2014-05-24 | 2014-05-24 | 163 | 79.12d |  |  | Gonzalo García Córdoba | 2h |
| 165 | 1.6 | **Entrega del producto final** | 6.25d | 2014-11-02 | 2014-11-08 | 82 | 0d |  |  |  | 24h |
| 166 | 1.6.1 | **Manual de usuario** | 6.25d | 2014-11-02 | 2014-11-08 |  | 0d |  |  |  | 14h |
| 167 | 1.6.1.1 | Elaboración del documento | 8h | 2014-11-02 | 2014-11-05 |  | 0d |  |  | Iván Franco | 8h |
| 168 | 1.6.1.2 | Revisión del documento | 2h | 2014-11-06 | 2014-11-06 | 167 | 0d |  |  | Ignacio J. Abad | 2h |
| 169 | 1.6.1.3 | Validación y correcciones | 4h | 2014-11-07 | 2014-11-08 | 168 | 0d |  |  | Gonzalo García Córdoba | 4h |
| 170 | 1.6.2 | **Manual de instalación.** | 4.25d | 2014-11-02 | 2014-11-06 |  | 2d |  |  |  | 10h |
| 171 | 1.6.2.1 | Elaboración del documento | 6h | 2014-11-02 | 2014-11-04 |  | 2d | 0.75d |  | Lucas Sagaria | 6h |
| 172 | 1.6.2.2 | Revisión del documento | 2h | 2014-11-05 | 2014-11-05 | 171 | 2d | 0.75d |  | Joaquin O Ibar | 2h |
| 173 | 1.6.2.3 | Validación y correcciones | 2h | 2014-11-06 | 2014-11-06 | 172 | 2d |  |  | Gonzalo García Córdoba | 2h |
| 174 | 1.7 | **Entregables de Marketing** | 116.12d | 2014-06-04 | 2014-09-28 |  | 47.12d |  | start no earlier than 2014-06-04 |  | 34h |
| 175 | 1.7.1 | **Poster del Proyecto** | 12.25d | 2014-06-16 | 2014-06-28 |  | 139d |  |  |  | 14h |
| 176 | 1.7.1.1 | Elaboración del entregable | 8h | 2014-06-16 | 2014-06-19 |  | 139d | 0.75d |  | Gonzalo García Córdoba | 8h |
| 177 | 1.7.1.2 | Revisión del entregable | 2h | 2014-06-21 | 2014-06-21 | 176 | 139d | 0.75d |  | Ignacio J. Abad | 2h |
| 178 | 1.7.1.3 | Validación y ajustes | 4h | 2014-06-22 | 2014-06-28 | 177 | 139d |  |  | Gonzalo García Córdoba | 4h |
| 179 | 1.7.2 | **Presentación Comercial del Proyecto** | 116.12d | 2014-06-04 | 2014-09-28 |  | 47.12d |  |  |  | 20h |
| 180 | 1.7.2.1 | Gestión del Catering | 4h | 2014-06-04 | 2014-06-05 |  | 48d | 0.75d |  | Joaquin O Ibar | 4h |
| 181 | 1.7.2.2 | Elaboración de la presentación | 6h | 2014-06-17 | 2014-06-22 | 180 | 48d | 0.75d |  | Iván Franco | 6h |
| 182 | 1.7.2.3 | Revisión de la presentación | 8h | 2014-08-17 | 2014-09-17 | 181 | 48d | 0.75d |  | Lucas Sagaria | 8h |
| 183 | 1.7.2.4 | Delivery de la presentación | 2h | 2014-09-27 | 2014-09-28 | 182 | 47.12d |  |  | Iván Franco | 2h |

| ID | WBS | Task | Duration | Start | Finish | Predecessors | Total slack | Resources | Work |
| --- | --- | --- | --- | --- | --- | --- | --- | --- | --- |
| 184 | 1.8 | **Cierre del proyecto** | 42h | 2014-11-09 | 2014-11-14 |  | 0d |  | 24h |
| 185 | 1.8.1 | **Documento de cierre del proyecto** | 5.25d | 2014-11-09 | 2014-11-14 |  | 0d |  | 12h |
| 186 | 1.8.1.1 | Elaboración del documento | 6h | 2014-11-09 | 2014-11-11 | 165 | 0d | Gonzalo García Córdoba | 6h |
| 187 | 1.8.1.2 | Revisión del documento | 4h | 2014-11-12 | 2014-11-13 | 186 | 0d | Ignacio J. Abad | 4h |
| 188 | 1.8.1.3 | Validación y correcciones | 2h | 2014-11-14 | 2014-11-14 | 187 | 0d | Iván Franco | 2h |
| 189 | 1.8.2 | **Documento de lecciones aprendidas** | 5.25d | 2014-11-09 | 2014-11-14 |  | 0d |  | 12h |
| 190 | 1.8.2.1 | Elaboración del documento | 6h | 2014-11-09 | 2014-11-11 | 165 | 0d | Joaquin O Ibar | 6h |
| 191 | 1.8.2.2 | Revisión del documento | 4h | 2014-11-12 | 2014-11-13 | 190 | 0d | Lucas Sagaria | 4h |
| 192 | 1.8.2.3 | Validación y correcciones | 2h | 2014-11-14 | 2014-11-14 | 191 | 0d | Gonzalo García Córdoba | 2h |
